# 23-038 Boone

Schedule from MS Project XML, 2024-02-23 to 2025-09-10, status date 2024-08-07, A marks actual dates.

## Calendars

- 5 Day: Mon-Fri 08:00-12:00, 13:00-17:00; Sat-Sun off.

## Schedule

| ID | WBS | Task | Duration | Start | Finish | Predecessors | Phoenix ID |
| --- | --- | --- | --- | --- | --- | --- | --- |
| 28 | 1 | **Sitework Subcontract** | 1d | 2024-02-23 A | 2024-02-23 A |  | 10 |
| 4 | 1.1 | **Prime Contract Executed** | 1d | 2024-08-07 | 2024-08-07 |  | 20 |
| 5 | 1.1.1 | **Construction Finish / Substantial Completion** | 1d | 2024-08-07 | 2024-08-07 |  | 25 |
| 6 | 1.1.1.1 | Final Completion | 1d | 2024-08-07 | 2024-08-07 |  | 30 |
| 9 | 1.1.1.2 | Sewer Line Redesign - Stop Work | 1d | 2024-05-01 A | 2024-05-01 A |  | 18 |
| 10 | 1.1.1.3 | Design and Re-Permitting Period | 1d | 2024-05-01 A | 2024-05-01 A | 9 | 22 |
| 11 | 1.1.1.4 | AHJ Approval | 66d | 2024-05-01 A | 2024-07-31 A | 10 | 23 |
| 12 | 1.1.1.5 | Sturgis Reprice New Plans (Plans Received 08/06) | 3d | 2024-08-06 A | 2024-08-09 | 11 | 24 |
| 29 | 1.1.1.6 | Sitework Submittals | 5d | 2024-08-12 | 2024-08-16 | 28, 12 | 15 |
| 13 | 1.1.1.7 | Sturgis Submit Change Request | 3d | 2024-08-12 | 2024-08-14 | 12 | 27 |
| 14 | 1.1.1.8 | Owner Approve Change Request | 3d | 2024-08-15 | 2024-08-19 | 13 | 28 |
| 15 | 1.1.1.9 | Sturgis Issue Sub Change Order | 3d | 2024-08-20 | 2024-08-22 | 14 | 29 |
| 30 | 1.1.1.10 | Sitework Material Lead Time | 20d | 2024-08-23 | 2024-09-19 | 29, 15 | 17 |
| 36 | 1.1.1.11 | Hardscape Subcontract | 5d | 2024-08-20 | 2024-08-26 | 14 | 70 |
| 32 | 1.1.1.12 | Landscaping Buyout | 5d | 2024-08-27 | 2024-09-02 | 36 | 19 |
| 33 | 1.1.1.13 | Landscaping Submittals | 10d | 2024-09-03 | 2024-09-16 | 32 | 21 |
| 34 | 1.1.1.14 | Landscape Material Lead Time | 10d | 2024-09-17 | 2024-09-30 | 33 | 26 |
| 40 | 1.1.1.15 | Bike Rack Submittal | 5d | 2024-09-03 | 2024-09-09 | 32 | 40 |
| 41 | 1.1.1.16 | Bike Rack Procurement | 3d | 2024-09-10 | 2024-09-12 | 40 | 50 |
| 42 | 1.1.1.17 | Bike Rack Lead Time | 10d | 2024-09-13 | 2024-09-26 | 41 | 60 |
| 37 | 1.1.1.18 | Hardscape Submittals | 10d | 2024-08-27 | 2024-09-09 | 36 | 80 |
| 38 | 1.1.1.19 | Hardscape Material Lead Time | 10d | 2024-09-10 | 2024-09-23 | 37 | 90 |
| 44 | 1.1.1.20 | Asphalt & Striping Subcontract | 1d | 2024-04-04 A | 2024-04-04 A | 36 | 100 |
| 45 | 1.1.1.21 | Asphalt & Striping Submittals | 10d | 2024-08-27 | 2024-09-09 | 44 | 110 |
| 46 | 1.1.1.22 | Asphalt & Striping Material Lead Time | 10d | 2024-09-10 | 2024-09-23 | 45 | 120 |
| 48 | 1.1.1.23 | Concrete Subcontract | 1d | 2024-03-08 A | 2024-03-08 A |  | 130 |
| 49 | 1.1.1.24 | Concrete Submittals | 10d | 2024-08-19 | 2024-08-30 | 29, 48 | 140 |
| 50 | 1.1.1.25 | Concrete material Lead Time | 10d | 2024-09-02 | 2024-09-13 | 49 | 150 |
| 52 | 1.1.1.26 | Gypcrete Sub Floor - SUBCONTRACT | 1d | 2024-04-29 A | 2024-04-29 A |  | 160 |
| 53 | 1.1.1.27 | Gypcrete Submittals | 5d | 2024-09-02 | 2024-09-06 | 49, 52 | 170 |
| 54 | 1.1.1.28 | Gypcrete Material Lead Time | 10d | 2024-09-09 | 2024-09-20 | 53 | 180 |
| 56 | 1.1.1.29 | Masonry Subcontract | 5d | 2024-08-20 | 2024-08-26 | 14 | 190 |
| 57 | 1.1.1.30 | Masonry Submittals | 10d | 2024-08-27 | 2024-09-09 | 56 | 200 |
| 58 | 1.1.1.31 | Masonry Material Lead Time ( Dumpster Enclosure ) | 10d | 2024-09-10 | 2024-09-23 | 57 | 210 |
| 60 | 1.1.1.32 | Metals Subcotnract | 5d | 2024-08-20 | 2024-08-26 | 14 | 220 |
| 61 | 1.1.1.33 | Metals Submittals | 15d | 2024-08-27 | 2024-09-16 | 60 | 230 |
| 62 | 1.1.1.34 | Metals Lead Times | 20d | 2024-09-17 | 2024-10-14 | 61 | 240 |
| 64 | 1.1.1.35 | Timber Framing - Material Procurement | 1d | 2024-03-08 A | 2024-03-08 A |  | 250 |
| 65 | 1.1.1.36 | Timber Framing - Subcontract | 1d | 2024-03-08 A | 2024-03-08 A | 64 | 260 |
| 66 | 1.1.1.37 | Timber Framing Submittals | 10d | 2024-08-07 | 2024-08-20 | 65 | 270 |
| 67 | 1.1.1.38 | Timber Framing - Material Lead Time | 40d | 2024-08-21 | 2024-10-15 | 66 | 280 |
| 69 | 1.1.1.39 | Insulation Subconctract | 1d | 2024-05-15 A | 2024-05-15 A |  | 290 |
| 70 | 1.1.1.40 | Insulation Submittals | 10d | 2024-08-21 | 2024-09-03 | 66, 69 | 300 |
| 71 | 1.1.1.41 | Insulation - Material Lead Time | 10d | 2024-09-04 | 2024-09-17 | 70 | 310 |
| 73 | 1.1.1.42 | Roofing Subcontract | 5d | 2024-09-04 | 2024-09-10 | 70 | 320 |
| 74 | 1.1.1.43 | Roofing Submittals | 10d | 2024-09-11 | 2024-09-24 | 73 | 330 |
| 75 | 1.1.1.44 | Roofing - Material Lead Time | 20d | 2024-09-25 | 2024-10-22 | 74 | 340 |
| 77 | 1.1.1.45 | Siding Subcontract | 5d | 2024-09-11 | 2024-09-17 | 73 | 350 |
| 78 | 1.1.1.46 | Siding Submittals | 10d | 2024-09-18 | 2024-10-01 | 77 | 360 |
| 79 | 1.1.1.47 | Siding Material Lead Time | 20d | 2024-10-02 | 2024-10-29 | 78 | 370 |
| 81 | 1.1.1.48 | Doors & Hardware Subcontract | 5d | 2024-09-18 | 2024-09-24 | 77 | 380 |
| 82 | 1.1.1.49 | Doors & Hardware Submittals | 10d | 2024-09-25 | 2024-10-08 | 81 | 390 |
| 83 | 1.1.1.50 | Doors & Hardware Lead Time | 25d | 2024-10-09 | 2024-11-12 | 82 | 400 |
| 85 | 1.1.1.51 | Storefront Subcontract | 5d | 2024-09-04 | 2024-09-10 | 70 | 410 |
| 86 | 1.1.1.52 | Storefront Submittals | 10d | 2024-09-11 | 2024-09-24 | 85 | 420 |
| 87 | 1.1.1.53 | Storefront Lead Time | 35d | 2024-09-25 | 2024-11-12 | 86 | 430 |
| 89 | 1.1.1.54 | Windows - Subcontract | 1d | 2024-04-30 A | 2024-04-30 A |  | 440 |
| 90 | 1.1.1.55 | Windows - Submittals | 10d | 2024-08-21 | 2024-09-03 | 66, 89 | 450 |
| 91 | 1.1.1.56 | Windows - Lead Time | 30d | 2024-09-04 | 2024-10-15 | 90 | 460 |
| 93 | 1.1.1.57 | Drywall & Misc. Materials - Subcontract | 1d | 2024-03-08 A | 2024-03-08 A |  | 470 |
| 94 | 1.1.1.58 | Drywall & Misc. Materials - Submittals | 10d | 2024-09-04 | 2024-09-17 | 90, 93 | 480 |
| 95 | 1.1.1.59 | Drywall & Misc. Materials - Lead Time | 10d | 2024-09-18 | 2024-10-01 | 94 | 490 |
| 97 | 1.1.1.60 | Floor Subcontract | 5d | 2024-09-18 | 2024-09-24 | 94 | 500 |
| 98 | 1.1.1.61 | Flooring Submittals | 10d | 2024-09-25 | 2024-10-08 | 97 | 510 |
| 99 | 1.1.1.62 | Flooring - Material Lead Time | 20d | 2024-10-09 | 2024-11-05 | 98 | 520 |
| 101 | 1.1.1.63 | Paint Subcontract | 1d | 2024-04-29 A | 2024-04-29 A |  | 530 |
| 102 | 1.1.1.64 | Paint Submittals | 5d | 2024-09-25 | 2024-10-01 | 97, 101 | 540 |
| 103 | 1.1.1.65 | Paint - Material Lead Time | 5d | 2024-10-02 | 2024-10-08 | 102 | 550 |
| 105 | 1.1.1.66 | Signage Subcontract | 5d | 2024-09-04 | 2024-09-10 | 90 | 560 |
| 106 | 1.1.1.67 | Signage Submittals | 15d | 2024-09-11 | 2024-10-01 | 105 | 570 |

| ID | WBS | Task | Duration | Start | Finish | Predecessors | Phoenix ID |
| --- | --- | --- | --- | --- | --- | --- | --- |
| 107 | 1.1.1.68 | Signage - Material Lead Time | 45d | 2024-10-02 | 2024-12-03 | 106 | 580 |
| 109 | 1.1.1.69 | Bath Accessories - Subcontract | 5d | 2024-10-02 | 2024-10-08 | 102 | 590 |
| 110 | 1.1.1.70 | Bath Accessories - Submittals | 10d | 2024-10-09 | 2024-10-22 | 109 | 600 |
| 111 | 1.1.1.71 | Bath Accessories - Lead Time | 15d | 2024-10-23 | 2024-11-12 | 110 | 610 |
| 113 | 1.1.1.72 | Fire Extinguishers - Subcontract | 5d | 2024-10-02 | 2024-10-08 | 102 | 620 |
| 114 | 1.1.1.73 | Fire Extinguishers - Submittals | 10d | 2024-10-09 | 2024-10-22 | 113 | 630 |
| 115 | 1.1.1.74 | Fire Extinguishers - Lead Time | 15d | 2024-10-23 | 2024-11-12 | 114 | 640 |
| 117 | 1.1.1.75 | Canopies Subcontract | 5d | 2024-09-04 | 2024-09-10 | 90 | 650 |
| 118 | 1.1.1.76 | Canopies Submittals | 10d | 2024-09-11 | 2024-09-24 | 117 | 660 |
| 119 | 1.1.1.77 | Canopies - Lead Time | 40d | 2024-09-25 | 2024-11-19 | 118 | 670 |
| 121 | 1.1.1.78 | Appliances - Subcontract | 5d | 2024-09-11 | 2024-09-17 | 117 | 680 |
| 122 | 1.1.1.79 | Appliances - Submittals | 10d | 2024-09-18 | 2024-10-01 | 121 | 690 |
| 123 | 1.1.1.80 | Appliances - Lead Time | 40d | 2024-10-02 | 2024-11-26 | 122 | 700 |
| 125 | 1.1.1.81 | Window Treatment - Subcontract | 5d | 2024-11-27 | 2024-12-03 | 123 | 710 |
| 126 | 1.1.1.82 | Window Treatment - Submittals | 10d | 2024-12-04 | 2024-12-17 | 125 | 720 |
| 127 | 1.1.1.83 | Window Treatment - Lead Time | 25d | 2024-12-18 | 2025-01-21 | 126 | 730 |
| 129 | 1.1.1.84 | Sprinkler - Subcontract | 5d | 2024-08-21 | 2024-08-27 | 66 | 740 |
| 130 | 1.1.1.85 | Sprinkler - Shop Drawings | 15d | 2024-08-28 | 2024-09-17 | 129 | 750 |
| 131 | 1.1.1.86 | Sprinkler - Lead Time | 15d | 2024-09-18 | 2024-10-08 | 130 | 760 |
| 133 | 1.1.1.87 | Plumbing Subcontract | 1d | 2024-04-04 A | 2024-04-04 A |  | 770 |
| 134 | 1.1.1.88 | Plumbing - Submittals | 10d | 2024-08-28 | 2024-09-10 | 129, 133 | 780 |
| 135 | 1.1.1.89 | Plumbing - Material Lead Time | 25d | 2024-09-11 | 2024-10-15 | 134 | 790 |
| 137 | 1.1.1.90 | HVAC - Subcontract | 1d | 2024-04-29 A | 2024-04-29 A |  | 800 |
| 138 | 1.1.1.91 | HVAC - Submittals | 10d | 2024-08-28 | 2024-09-10 | 129, 137 | 810 |
| 139 | 1.1.1.92 | HVAC - Material Lead Time | 30d | 2024-09-11 | 2024-10-22 | 138 | 820 |
| 141 | 1.1.1.93 | Electrical - Subcontract | 1d | 2024-03-08 A | 2024-03-08 A |  | 830 |
| 142 | 1.1.1.94 | Electrical - Submittals | 10d | 2024-08-28 | 2024-09-10 | 129, 141 | 840 |
| 143 | 1.1.1.95 | Electrical - Material Lead Time | 30d | 2024-09-11 | 2024-10-22 | 142 | 850 |
| 145 | 1.1.1.96 | Low Voltage - Subcontract | 5d | 2024-09-11 | 2024-09-17 | 141, 142 | 860 |
| 146 | 1.1.1.97 | Low Voltage - Submittals | 10d | 2024-09-18 | 2024-10-01 | 145 | 870 |
| 147 | 1.1.1.98 | Low Voltage - Lead Time | 10d | 2024-10-02 | 2024-10-15 | 146 | 880 |
| 149 | 1.1.1.99 | Lighting - Purchase order | 5d | 2024-09-11 | 2024-09-17 | 141, 142 | 890 |
| 150 | 1.1.1.100 | Lighting Submittals | 10d | 2024-09-18 | 2024-10-01 | 149 | 900 |
| 151 | 1.1.1.101 | Lighting - lead Time | 25d | 2024-10-02 | 2024-11-05 | 150 | 910 |
| 153 | 1.1.1.102 | Fire Alarm - Subcontract | 5d | 2024-09-11 | 2024-09-17 | 141, 142 | 920 |
| 154 | 1.1.1.103 | Fire Alarm - Submittals | 15d | 2024-09-18 | 2024-10-08 | 153 | 930 |
| 155 | 1.1.1.104 | Fire Alarm - Lead Time | 15d | 2024-10-09 | 2024-10-29 | 154 | 940 |
| 158 | 1.1.1.105 | Mobilization | 5d | 2024-08-07 | 2024-08-13 |  | 950 |
| 159 | 1.1.1.106 | Erosion Control - Phase 1 | 5d | 2024-08-14 | 2024-08-20 | 158 | 960 |
| 160 | 1.1.1.107 | Demo / Grub | 5d | 2024-08-21 | 2024-08-27 | 159 | 970 |
| 161 | 1.1.1.108 | Rough Grading | 5d | 2024-08-28 | 2024-09-03 | 160 | 980 |
| 162 | 1.1.1.109 | Underground Utilities | 30d | 2024-09-20 | 2024-10-31 | 30, 161 | 1090 |
| 164 | 1.1.1.110 | Foundations & SOG | 12d | 2024-11-01 | 2024-11-18 | 50, 162 | 1760 |
| 184 | 1.1.1.111 | Foundations & SOG | 12d | 2024-11-19 | 2024-12-04 | 164 | 1560 |
| 204 | 1.1.1.112 | Foundations & SOG | 12d | 2024-12-05 | 2024-12-20 | 184 | 1360 |
| 224 | 1.1.1.113 | Foundations & SOG | 10d | 2024-12-23 | 2025-01-03 | 204 | 1160 |
| 244 | 1.1.1.114 | Foundations & SOG | 10d | 2025-01-06 | 2025-01-17 | 224 | 990 |
| 205 | 1.1.1.115 | Structure & Windows | 15d | 2024-12-23 | 2025-01-10 | 204 | 1370 |
| 185 | 1.1.1.116 | Structure & Windows | 15d | 2024-12-05 | 2024-12-25 | 184 | 1570 |
| 186 | 1.1.1.117 | Sheathing | 10d | 2024-12-26 | 2025-01-08 | 185 | 1580 |
| 206 | 1.1.1.118 | Sheathing | 10d | 2025-01-13 | 2025-01-24 | 205 | 1380 |
| 207 | 1.1.1.119 | Roof | 5d | 2025-01-27 | 2025-01-31 | 206 | 1390 |
| 225 | 1.1.1.120 | Structure & Windows | 15d | 2025-01-06 | 2025-01-24 | 224 | 1170 |
| 226 | 1.1.1.121 | Sheathing | 10d | 2025-01-27 | 2025-02-07 | 225 | 1180 |
| 227 | 1.1.1.122 | Roof | 5d | 2025-02-10 | 2025-02-14 | 226 | 1190 |
| 228 | 1.1.1.123 | Siding or Brick Facade | 15d | 2025-02-17 | 2025-03-07 | 227 | 1200 |
| 187 | 1.1.1.124 | Roof | 5d | 2025-01-09 | 2025-01-15 | 186 | 1590 |
| 188 | 1.1.1.125 | Siding or Brick Facade | 15d | 2025-01-16 | 2025-02-05 | 187 | 1600 |
| 189 | 1.1.1.126 | MEP Rough | 20d | 2025-02-06 | 2025-03-05 | 188 | 1610 |
| 190 | 1.1.1.127 | Insulation | 10d | 2025-02-06 | 2025-02-19 | 188 | 1620 |
| 191 | 1.1.1.128 | Cover Up Inspection | 5d | 2025-03-06 | 2025-03-12 | 189, 190 | 1630 |
| 245 | 1.1.1.129 | Structure & Windows | 15d | 2025-01-20 | 2025-02-07 | 244 | 1000 |
| 246 | 1.1.1.130 | Sheathing | 10d | 2025-02-10 | 2025-02-21 | 245 | 1010 |
| 247 | 1.1.1.131 | Roof | 5d | 2025-02-24 | 2025-02-28 | 246 | 1020 |
| 248 | 1.1.1.132 | Siding or Brick Facade | 15d | 2025-03-03 | 2025-03-21 | 247 | 1030 |
| 249 | 1.1.1.133 | MEP Rough | 13d | 2025-03-24 | 2025-04-09 | 248 | 1040 |
| 250 | 1.1.1.134 | Insulation | 10d | 2025-03-24 | 2025-04-04 | 248 | 1050 |
| 251 | 1.1.1.135 | Cover Up Inspection | 5d | 2025-04-10 | 2025-04-16 | 249, 250 | 1060 |
| 252 | 1.1.1.136 | Drywall Install and Finish | 16d | 2025-04-17 | 2025-05-08 | 251 | 1070 |
| 192 | 1.1.1.137 | Drywall Install and Finish | 16d | 2025-03-13 | 2025-04-03 | 191 | 1640 |

| ID | WBS | Task | Duration | Start | Finish | Predecessors | Phoenix ID |
| --- | --- | --- | --- | --- | --- | --- | --- |
| 193 | 1.1.1.138 | Gypcrete | 5d | 2025-04-04 | 2025-04-10 | 192 | 1650 |
| 253 | 1.1.1.139 | Gypcrete | 5d | 2025-05-09 | 2025-05-15 | 252 | 1080 |
| 254 | 1.1.1.140 | MEP Closets | 5d | 2025-05-16 | 2025-05-22 | 253 | 1085 |
| 255 | 1.1.1.141 | Conditioned Air | 3d | 2025-05-23 | 2025-05-27 | 254 | 1087 |
| 256 | 1.1.1.142 | Doors and Hardware | 3d | 2025-05-28 | 2025-05-30 | 255 | 1088 |
| 257 | 1.1.1.143 | Paint Activities | 4d | 2025-05-16 | 2025-05-21 | 253 | 1089 |
| 258 | 1.1.1.144 | Cabinets | 10d | 2025-05-28 | 2025-06-10 | 255 | 1100 |
| 259 | 1.1.1.145 | Flooring Activities | 3d | 2025-06-11 | 2025-06-13 | 258 | 1110 |
| 260 | 1.1.1.146 | Appliances | 3d | 2025-06-11 | 2025-06-13 | 258 | 1120 |
| 261 | 1.1.1.147 | MEP Trim Out | 10d | 2025-05-22 | 2025-06-04 | 257 | 1130 |
| 262 | 1.1.1.148 | Final Clean & Punch | 10d | 2025-06-05 | 2025-06-18 | 261 | 1140 |
| 208 | 1.1.1.149 | Siding or Brick Facade | 13d | 2025-02-03 | 2025-02-19 | 207 | 1400 |
| 209 | 1.1.1.150 | MEP Rough | 15d | 2025-02-20 | 2025-03-12 | 208 | 1410 |
| 210 | 1.1.1.151 | Insulation | 7d | 2025-02-20 | 2025-02-28 | 208 | 1420 |
| 211 | 1.1.1.152 | Cover Up Inspection | 5d | 2025-03-13 | 2025-03-19 | 209, 210 | 1430 |
| 212 | 1.1.1.153 | Drywall Install and Finish | 13d | 2025-03-20 | 2025-04-07 | 211 | 1440 |
| 213 | 1.1.1.154 | Gypcrete | 3d | 2025-04-08 | 2025-04-10 | 212 | 1450 |
| 214 | 1.1.1.155 | MEP Closets | 5d | 2025-04-11 | 2025-04-17 | 213 | 1460 |
| 215 | 1.1.1.156 | Conditioned Air | 3d | 2025-04-18 | 2025-04-22 | 214 | 1470 |
| 218 | 1.1.1.157 | Cabinets | 10d | 2025-04-23 | 2025-05-06 | 215 | 1500 |
| 220 | 1.1.1.158 | Appliances | 3d | 2025-05-07 | 2025-05-09 | 218 | 1520 |
| 217 | 1.1.1.159 | Paint Activities | 4d | 2025-04-11 | 2025-04-16 | 213 | 1490 |
| 221 | 1.1.1.160 | MEP Trim Out | 10d | 2025-04-17 | 2025-04-30 | 217 | 1530 |
| 222 | 1.1.1.161 | Final Clean & Punch | 10d | 2025-05-12 | 2025-05-23 | 220, 221 | 1540 |
| 264 | 1.1.1.162 | Hardscape - Curb & Gutter | 15d | 2025-05-26 | 2025-06-13 | 222 | 1150 |
| 265 | 1.1.1.163 | Hardscapes - Sidewalks | 15d | 2025-06-16 | 2025-07-04 | 264 | 1155 |
| 267 | 1.1.1.164 | Install Irrigation Lines and Sleeves | 8d | 2025-07-07 | 2025-07-16 | 265 | 1157 |
| 268 | 1.1.1.165 | Trim out Irrigation Lines and Zones | 10d | 2025-07-17 | 2025-07-30 | 267 | 1158 |
| 269 | 1.1.1.166 | Test Irrigation Systems | 5d | 2025-07-31 | 2025-08-06 | 268 | 1159 |
| 271 | 1.1.1.167 | Install GAB | 3d | 2025-07-17 | 2025-07-21 | 46, 267 | 1165 |
| 272 | 1.1.1.168 | Install Binder | 3d | 2025-07-22 | 2025-07-24 | 271 | 1167 |
| 273 | 1.1.1.169 | Install Asphalt | 3d | 2025-07-25 | 2025-07-29 | 272 | 1168 |
| 275 | 1.1.1.170 | Install Landscaping Plants and Trees | 15d | 2025-07-17 | 2025-08-06 | 262FF+10d, 265SS, 267 | 1169 |
| 276 | 1.1.1.171 | Landscape Punch | 5d | 2025-08-07 | 2025-08-13 | 275 | 1175 |
| 278 | 1.1.1.172 | Install Striping | 5d | 2025-07-30 | 2025-08-05 | 273 | 1177 |
| 229 | 1.1.1.173 | MEP Rough | 20d | 2025-03-10 | 2025-04-04 | 228 | 1210 |
| 230 | 1.1.1.174 | Insulation | 10d | 2025-03-10 | 2025-03-21 | 228 | 1220 |
| 231 | 1.1.1.175 | Cover Up Inspection | 5d | 2025-04-07 | 2025-04-11 | 229, 230 | 1230 |
| 232 | 1.1.1.176 | Drywall Install and Finish | 13d | 2025-04-14 | 2025-04-30 | 231 | 1240 |
| 233 | 1.1.1.177 | Gypcrete | 5d | 2025-05-01 | 2025-05-07 | 232 | 1250 |
| 237 | 1.1.1.178 | Paint Activities | 4d | 2025-05-08 | 2025-05-13 | 233 | 1290 |
| 241 | 1.1.1.179 | MEP Trim Out | 10d | 2025-05-14 | 2025-05-27 | 237 | 1330 |
| 242 | 1.1.1.180 | Final Clean & Punch | 10d | 2025-05-28 | 2025-06-10 | 241 | 1340 |
| 194 | 1.1.1.181 | MEP Closets | 5d | 2025-04-11 | 2025-04-17 | 193 | 1660 |
| 195 | 1.1.1.182 | Conditioned Air | 3d | 2025-04-18 | 2025-04-22 | 194 | 1670 |
| 198 | 1.1.1.183 | Cabinets | 10d | 2025-04-23 | 2025-05-06 | 195 | 1700 |
| 200 | 1.1.1.184 | Appliances | 3d | 2025-05-07 | 2025-05-09 | 198 | 1720 |
| 197 | 1.1.1.185 | Paint Activities | 4d | 2025-04-11 | 2025-04-16 | 193 | 1690 |
| 201 | 1.1.1.186 | MEP Trim Out | 10d | 2025-04-17 | 2025-04-30 | 197 | 1730 |
| 202 | 1.1.1.187 | Final Clean & Punch | 10d | 2025-05-12 | 2025-05-23 | 200, 201 | 1740 |
| 165 | 1.1.1.188 | Structure & Windows | 17d | 2024-11-19 | 2024-12-11 | 67, 91FF+10d, 164 | 1770 |
| 166 | 1.1.1.189 | Sheathing | 10d | 2024-12-12 | 2024-12-25 | 62, 165 | 1780 |
| 167 | 1.1.1.190 | Roof | 5d | 2024-12-26 | 2025-01-01 | 75, 166 | 1790 |
| 168 | 1.1.1.191 | Siding or Brick Facade | 13d | 2025-01-02 | 2025-01-20 | 58, 79, 87FF+10d, 167 | 1800 |
| 169 | 1.1.1.192 | MEP Rough | 13d | 2025-01-21 | 2025-02-06 | 131, 135, 139, 143, 147, 151, 155, 168 | 1810 |
| 170 | 1.1.1.193 | Insulation | 8d | 2025-01-21 | 2025-01-30 | 71, 168 | 1820 |
| 171 | 1.1.1.194 | Cover Up Inspection | 4d | 2025-02-07 | 2025-02-12 | 169, 170 | 1830 |
| 172 | 1.1.1.195 | Drywall Install and Finish | 10d | 2025-02-13 | 2025-02-26 | 95, 171 | 1840 |
| 173 | 1.1.1.196 | Gypcrete | 3d | 2025-02-27 | 2025-03-03 | 54, 172 | 1850 |
| 174 | 1.1.1.197 | MEP Closets | 5d | 2025-03-04 | 2025-03-10 | 173 | 1860 |
| 175 | 1.1.1.198 | Conditioned Air | 3d | 2025-03-11 | 2025-03-13 | 174 | 1870 |
| 178 | 1.1.1.199 | Cabinets | 10d | 2025-03-14 | 2025-03-27 | 175 | 1900 |
| 180 | 1.1.1.200 | Appliances | 3d | 2025-03-28 | 2025-04-01 | 127, 178 | 1920 |
| 177 | 1.1.1.201 | Paint Activities | 4d | 2025-03-04 | 2025-03-07 | 103, 173 | 1890 |
| 181 | 1.1.1.202 | MEP Trim Out | 10d | 2025-03-10 | 2025-03-21 | 107, 111, 115, 127, 177 | 1930 |
| 182 | 1.1.1.203 | Final Clean & Punch | 10d | 2025-04-02 | 2025-04-15 | 180, 181 | 1940 |
| 280 | 1.1.1.204 | Final Inspections | 10d | 2025-08-14 | 2025-08-27 | 262, 242, 222, 202, 182, 275, 276, 278 | 1178 |
| 281 | 1.1.1.205 | Punch and Closeout | 10d | 2025-08-28 | 2025-09-10 | 269, 276, 280 | 1179 |
| 18 | 1.1.1.206 | GA Power Release Transformer | 1d | 2024-08-07 | 2024-08-07 |  | 35 |
| 25 | 1.1.1.207 | Georgia Natural Gas - Account Setup | 1d | 2024-08-07 | 2024-08-07 |  | 37 |

| ID | WBS | Task | Duration | Start | Finish | Predecessors | Phoenix ID |
| --- | --- | --- | --- | --- | --- | --- | --- |
| 22 | 1.1.1.208 | AT&T Plan Established | 1d | 2024-08-07 | 2024-08-07 |  | 38 |
| 23 | 1.1.1.209 | Comcast Plan Established | 1d | 2024-08-07 | 2024-08-07 |  | 39 |
| 20 | 1.1.1.210 | Watershed Plan Established | 1d | 2024-08-07 | 2024-08-07 |  | 45 |
| 35 | 1.1.2 | Div 02 - Hardscape |  |  |  |  |  |
| 157 | 1.1.3 | Sitework |  |  |  |  |  |
| 8 | 1.1.4 | Sewer Redesign |  |  |  |  |  |
| 243 | 1.1.5 | 12 PLEX |  |  |  |  |  |
| 47 | 1.1.6 | Div 03 - Concrete |  |  |  |  |  |
| 112 | 1.1.7 | Div 10 - Fire Extinguishers |  |  |  |  |  |
| 88 | 1.1.8 | Div 08 - Windows |  |  |  |  |  |
| 39 | 1.1.9 | **Div 02 - Bike Racks** |  |  |  |  |  |
| 234 | 1.1.9.1 | MEP Closets | 5d | 2025-05-08 | 2025-05-14 | 233 | 1260 |
| 76 | 1.1.10 | Div 07 - Siding |  |  |  |  |  |
| 21 | 1.1.11 | **Communication** |  |  |  |  |  |
| 235 | 1.1.11.1 | Conditioned Air | 3d | 2025-05-15 | 2025-05-19 | 234 | 1270 |
| 236 | 1.1.11.2 | Doors and Hardware | 3d | 2025-05-20 | 2025-05-22 | 235 | 1280 |
| 279 | 1.1.12 | Final Inspections |  |  |  |  |  |
| 203 | 1.1.13 | 9 Plex |  |  |  |  |  |
| 266 | 1.1.14 | Exterior - Irrigation |  |  |  |  |  |
| 63 | 1.1.15 | Div 06 - Timber Framing |  |  |  |  |  |
| 144 | 1.1.16 | Div 16 - Low Voltage |  |  |  |  |  |
| 16 | 1.2 | Utilities |  |  |  |  |  |
| 26 | 1.3 | **Procurement** |  |  |  |  |  |
| 51 | 1.3.1 | Div 03 - Gypcrete Sub Floors |  |  |  |  |  |
| 43 | 1.3.2 | Div 02 - Asphalt & Striping |  |  |  |  |  |

| ID | WBS | Task | Duration | Start | Finish | Predecessors | Phoenix ID |
| --- | --- | --- | --- | --- | --- | --- | --- |
| 1 | 2 | **23-038 - Boone** |  |  |  |  |  |
| 238 | 2.1 | **Cabinets** | 10d | 2025-05-20 | 2025-06-02 | 235 | 1300 |
| 240 | 2.1.1 | Appliances | 3d | 2025-06-03 | 2025-06-05 | 238 | 1320 |
| 128 | 2.1.2 | Div 15 - Sprinkler |  |  |  |  |  |
| 19 | 2.1.3 | Watershed |  |  |  |  |  |
| 3 | 2.1.4 | Sturgis Prime Contract |  |  |  |  |  |
| 31 | 2.1.5 | Div 02 - Landscaping |  |  |  |  |  |
| 263 | 2.1.6 | Exterior - Hardscapes |  |  |  |  |  |
| 120 | 2.1.7 | **Div 11 - Appliances** |  |  |  |  |  |
| 199 | 2.1.7.1 | Flooring Activities | 3d | 2025-05-07 | 2025-05-09 | 198 | 1710 |
| 55 | 2.1.8 | Div 04 - Masonry |  |  |  |  |  |
| 277 | 2.1.9 | **Exterior - Striping** |  |  |  |  |  |
| 196 | 2.1.9.1 | Doors and Hardware | 3d | 2025-04-23 | 2025-04-25 | 195 | 1680 |
| 116 | 2.1.10 | Div 10 - Canopies |  |  |  |  |  |
| 72 | 2.1.11 | Div 07 - Roofing |  |  |  |  |  |
| 24 | 2.1.12 | Gas Service |  |  |  |  |  |
| 140 | 2.1.13 | **Div 16 - Electrical** |  |  |  |  |  |
| 239 | 2.1.13.1 | Flooring Activities | 3d | 2025-06-03 | 2025-06-05 | 238 | 1310 |
| 163 | 2.1.14 | 6 Plex A |  |  |  |  |  |
| 183 | 2.1.15 | Commercial |  |  |  |  |  |
| 223 | 2.1.16 | **6 Plex B** |  |  |  |  |  |
| 219 | 2.1.16.1 | Flooring Activities | 3d | 2025-05-07 | 2025-05-09 | 218 | 1510 |
| 156 | 2.2 | **Construction** |  |  |  |  |  |
| 176 | 2.2.1 | Doors and Hardware | 3d | 2025-03-14 | 2025-03-18 | 83, 175 | 1880 |
| 17 | 2.2.2 | GA Power |  |  |  |  |  |
| 100 | 2.2.3 | Div 09 - Paint |  |  |  |  |  |
| 59 | 2.2.4 | Div 05 - Metals |  |  |  |  |  |

| ID | WBS | Task | Duration | Start | Finish | Predecessors | Phoenix ID |
| --- | --- | --- | --- | --- | --- | --- | --- |
| 2 | 2.3 | **Owner** |  |  |  |  |  |
| 124 | 2.3.1 | Div 12 - Window Treatments |  |  |  |  |  |
| 148 | 2.3.2 | Div 16 - Lighting |  |  |  |  |  |
| 152 | 2.3.3 | **Div 16 - Fire Alarm** |  |  |  |  |  |
| 179 | 2.3.3.1 | Flooring Activities | 3d | 2025-03-28 | 2025-04-01 | 99, 178 | 1910 |
| 7 | 2.4 | **Delays and Impacts** |  |  |  |  |  |
| 27 | 2.4.1 | Div 02 - Sitework |  |  |  |  |  |
| 96 | 2.4.2 | Div 09 - Flooring |  |  |  |  |  |
| 80 | 2.4.3 | Div 08 - Doors & Hardware |  |  |  |  |  |
| 136 | 2.4.4 | **Div 15 - HVAC** |  |  |  |  |  |
| 216 | 2.4.4.1 | Doors and Hardware | 3d | 2025-04-23 | 2025-04-25 | 215 | 1480 |
| 270 | 2.4.5 | Exterior - Asphalt |  |  |  |  |  |
| 274 | 2.4.6 | Exterior - Landscape |  |  |  |  |  |
| 68 | 2.4.7 | Div 07 - Insulation |  |  |  |  |  |
| 108 | 2.4.8 | Div 10 - Bath Accessories |  |  |  |  |  |
| 92 | 2.4.9 | Div 09 - Drywall and Misc. Materials |  |  |  |  |  |
| 132 | 2.4.10 | Div 15 - Plumbing |  |  |  |  |  |
| 84 | 2.4.11 | Div 08 - Storefronts |  |  |  |  |  |
| 104 | 2.4.12 | Div 10 - Signage |  |  |  |  |  |
